# 高风险管控平台建设

How a schedule from a web Gantt chart changed from version to version. A marks actual dates.

## Version 1 (saved 2024-10-12)

| ID | WBS | Task | Duration | Start | Finish | Predecessors | Complete |
| --- | --- | --- | --- | --- | --- | --- | --- |
| 2 | 1 | **高风险规则库建设** | 222d | 2024-03-01 | 2024-10-08 |  | 74% |
| 3 |  | 规则库门户通用脚手架 | 42d | 2024-03-01 | 2024-04-11 |  | 100% |
| 4 |  | 高风险规则拦截接口 | 63d | 2024-04-12 | 2024-06-13 | 3 | 100% |
| 5 |  | 高危规则动态配置 | 28d | 2024-06-14 | 2024-07-11 | 4 | 100% |
| 6 |  | 高危命令动态配置 | 91d | 2024-04-12 | 2024-07-11 |  |  |
| 7 |  | 正则表达式自动生成 | 40d | 2024-04-12 | 2024-05-21 |  | 80% |
| 8 |  | 风险规则库 - 日志模块 | 36d | 2024-03-16 | 2024-04-20 |  | 100% |
| 9 | 1.7 | **接口服务[三方数据导入]** | 101d | 2024-06-30 | 2024-10-08 |  | 94% |
| 10 |  | 对接 cmdb 资产数据 | 73d | 2024-06-30 | 2024-09-10 |  | 100% |
| 11 |  | 对接安全中心[资产账密] | 28d | 2024-09-11 | 2024-10-08 | 10 | 80% |
| 12 | 2 | **接入多平台工作流建设** | 112d | 2024-06-19 | 2024-10-08 |  | 53% |
| 13 |  | PC端工作流 | 59d | 2024-06-19 | 2024-08-16 |  | 100% |
| 14 |  | 移动端工作流UI | 53d | 2024-08-17 | 2024-10-08 | 13 |  |
| 16 | 3 | **高风险堡垒机建设** | 222d | 2024-03-01 | 2024-10-08 |  | 90% |
| 17 | 3.1 | **堡垒机组件部署** | 206d | 2024-03-01 | 2024-09-22 |  | 100% |
| 18 |  | Jumpserver Core 组件部署 | 127d | 2024-03-01 | 2024-07-05 |  | 100% |
| 19 |  | Koko 组件部署 | 122d | 2024-03-01 | 2024-06-30 |  | 100% |
| 20 |  | 远程应用机[Windows资产] | 84d | 2024-07-01 | 2024-09-22 | 19 | 100% |
| 21 |  | SSO单点登录以及添加登录短信认证 | 51d | 2024-08-06 | 2024-09-25 |  | 100% |
| 22 |  | 登陆日志模块 | 51d | 2024-08-06 | 2024-09-25 |  | 80% |
| 23 | 3.4 | **堡垒机终端组件** | 149d | 2024-05-13 | 2024-10-08 |  | 82% |
| 24 | 3.4.1 | **Koko 实现规则拦截** | 70d | 2024-05-13 | 2024-07-21 |  | 31% |
| 25 |  | 普通高危Linux命令 | 22d | 2024-05-13 | 2024-06-03 |  | 100% |
| 26 |  | MySQL大部分的高危命令 | 33d | 2024-06-04 | 2024-07-06 | 25 |  |
| 27 |  | Shell复杂命令 | 15d | 2024-07-07 | 2024-07-21 | 26 |  |
| 28 |  | 实现接口调用加密 | 29d | 2024-05-13 | 2024-06-10 |  | 100% |
| 29 |  | 实现事中审批 | 46d | 2024-06-04 | 2024-07-19 |  | 90% |
| 30 |  | 附件服务器的下载 | 79d | 2024-07-22 | 2024-10-08 |  | 90% |
| 31 |  | 附件服务器的上传 | 79d | 2024-07-22 | 2024-10-08 |  | 90% |
| 32 |  | 固定条件+非固定条件优化拦截 | 79d | 2024-07-22 | 2024-10-08 |  | 100% |

## Version 2 (saved 2024-10-12)

Last finish 2024-10-08 → 2024-10-23 (+15d).

Added:

| ID | Task | Duration | Start | Finish |
| --- | --- | --- | --- | --- |
| 16 | **堡垒机页面功能** | 9d | 2024-10-15 | 2024-10-23 |
| 17 | 堡垒机资产-批量导入 | 9d | 2024-10-15 | 2024-10-23 |

Changed:

| ID | Task | Finish | Duration | Complete |
| --- | --- | --- | --- | --- |
| 15 | **高风险堡垒机建设** | 2024-10-08 → 2024-10-23 (+15d) | 222d → 237d | 90% → 89% |

## Version 3 (saved 2024-10-22)

Last finish 2024-10-23 → 2024-10-28 (+5d).

Changed:

| ID | Task | Finish | Duration |
| --- | --- | --- | --- |
| 15 | **高风险堡垒机建设** | 2024-10-23 → 2024-10-28 (+5d) | 237d → 242d |
| 16 | **堡垒机页面功能** | 2024-10-23 → 2024-10-28 (+5d) | 9d → 14d |
| 17 | 堡垒机资产-批量导入 | 2024-10-23 → 2024-10-28 (+5d) | 9d → 14d |
