# 高风险管控平台建设

How a schedule from a web Gantt chart changed from version to version. A marks actual dates.

## Version 1 (saved 2024-10-22)

| ID | WBS | Task | Duration | Start | Finish | Predecessors | Complete |
| --- | --- | --- | --- | --- | --- | --- | --- |
| 2 | 1 | **高风险规则库建设** | 222d | 2024-03-01 | 2024-10-08 |  | 74% |
| 3 |  | 规则库门户通用脚手架 | 42d | 2024-03-01 | 2024-04-11 |  | 100% |
| 4 |  | 高风险规则拦截接口 | 63d | 2024-04-12 | 2024-06-13 | 3 | 100% |
| 5 |  | 高危规则动态配置 | 28d | 2024-06-14 | 2024-07-11 | 4 | 100% |
| 6 |  | 高危命令动态配置 | 91d | 2024-04-12 | 2024-07-11 |  |  |
| 7 |  | 正则表达式自动生成 | 40d | 2024-04-12 | 2024-05-21 |  | 80% |
| 8 |  | 风险规则库 - 日志模块 | 36d | 2024-03-16 | 2024-04-20 |  | 100% |
| 9 | 1.7 | **接口服务[三方数据导入]** | 101d | 2024-06-30 | 2024-10-08 |  | 94% |
| 10 |  | 对接 cmdb 资产数据 | 73d | 2024-06-30 | 2024-09-10 |  | 100% |
| 11 |  | 对接安全中心[资产账密] | 28d | 2024-09-11 | 2024-10-08 | 10 | 80% |
| 12 | 2 | **接入多平台工作流建设** | 112d | 2024-06-19 | 2024-10-08 |  | 53% |
| 13 |  | PC端工作流 | 59d | 2024-06-19 | 2024-08-16 |  | 100% |
| 14 |  | 移动端工作流UI | 53d | 2024-08-17 | 2024-10-08 | 13 |  |
| 15 | 3 | **高风险堡垒机建设** | 222d | 2024-03-01 | 2024-10-08 |  | 90% |
| 16 | 3.1 | **堡垒机组件部署** | 206d | 2024-03-01 | 2024-09-22 |  | 100% |
| 17 |  | Jumpserver Core 组件部署 | 127d | 2024-03-01 | 2024-07-05 |  | 100% |
| 18 |  | Koko 组件部署 | 122d | 2024-03-01 | 2024-06-30 |  | 100% |
| 19 |  | 远程应用机[Windows资产] | 84d | 2024-07-01 | 2024-09-22 | 18 | 100% |
| 20 |  | SSO单点登录以及添加登录短信认证 | 51d | 2024-08-06 | 2024-09-25 |  | 100% |
| 21 |  | 登陆日志模块 | 51d | 2024-08-06 | 2024-09-25 |  | 80% |
| 22 | 3.4 | **堡垒机终端组件** | 149d | 2024-05-13 | 2024-10-08 |  | 82% |
| 23 | 3.4.1 | **Koko 实现规则拦截** | 70d | 2024-05-13 | 2024-07-21 |  | 31% |
| 24 |  | 普通高危Linux命令 | 22d | 2024-05-13 | 2024-06-03 |  | 100% |
| 25 |  | MySQL大部分的高危命令 | 33d | 2024-06-04 | 2024-07-06 | 24 |  |
| 26 |  | Shell复杂命令 | 15d | 2024-07-07 | 2024-07-21 | 25 |  |
| 27 |  | 实现接口调用加密 | 29d | 2024-05-13 | 2024-06-10 |  | 100% |
| 28 |  | 实现事中审批 | 46d | 2024-06-04 | 2024-07-19 |  | 90% |
| 29 |  | 附件服务器的下载 | 79d | 2024-07-22 | 2024-10-08 |  | 90% |
| 30 |  | 附件服务器的上传 | 79d | 2024-07-22 | 2024-10-08 |  | 90% |
| 31 |  | 固定条件+非固定条件优化拦截 | 79d | 2024-07-22 | 2024-10-08 |  | 100% |

## Version 2 (saved 2024-10-22)

Last finish 2024-10-08 → 2024-10-21 (+13d).

Added:

| ID | Task | Duration | Start | Finish |
| --- | --- | --- | --- | --- |
| 22 | 堡垒机的资产支持批量导入 | 29d | 2024-09-23 | 2024-10-21 |

Changed:

| ID | Task | Finish | Duration | Complete |
| --- | --- | --- | --- | --- |
| 15 | **高风险堡垒机建设** | 2024-10-08 → 2024-10-21 (+13d) | 222d → 235d | 90% → 87% |
| 21 | 登陆日志模块 | 2024-09-25 → 2024-09-22 (-3d) | 51d → 48d |  |

## Version 3 (saved 2024-10-24)

Last finish stays 2024-10-21. Complete tasks 13 → 14.

Added:

| ID | Task | Duration | Start | Finish |
| --- | --- | --- | --- | --- |
| 9 | 风险规则库-数据库生产环境还在申请中 | 36d | 2024-03-16 | 2024-04-20 |
| 24 | 堡垒机资产、用户等模块 数据量多大而卡顿 | 29d | 2024-09-23 | 2024-10-21 |

Changed:

| ID | Task | Complete |
| --- | --- | --- |
| 13 | **接入多平台工作流建设** | 53% → 100% |
| 15 | 移动端工作流UI | 0% → 100% |
| 16 | **高风险堡垒机建设** | 87% → 84% |

## Version 4 (saved 2024-10-25)

Last finish 2024-10-21 → 2024-10-25 (+4d).

Changed:

| ID | Task | Start | Finish | Duration | Complete |
| --- | --- | --- | --- | --- | --- |
| 2 | **高风险规则库建设** |  | 2024-10-08 → 2024-10-25 (+17d) | 222d → 239d | 74% → 68% |
| 9 | 风险规则库-数据库生产环境还在申请中 | 2024-03-16 → 2024-09-20 (+188d) | 2024-04-20 → 2024-10-25 (+188d) |  |  |
| 10 | **接口服务[三方数据导入]** |  | 2024-10-08 → 2024-10-25 (+17d) | 101d → 118d | 94% → 92% |
| 12 | 对接安全中心[资产账密] |  | 2024-10-08 → 2024-10-25 (+17d) | 28d → 45d |  |

## Version 5 (saved 2024-11-01)

Last finish 2024-10-25 → 2024-11-02 (+8d).

Changed:

| ID | Task | Start | Finish |
| --- | --- | --- | --- |
| 2 | **高风险规则库建设** | 2024-03-01 → 2024-03-09 (+8d) | 2024-10-25 → 2024-11-02 (+8d) |
| 3 | 规则库门户通用脚手架 | 2024-03-01 → 2024-03-09 (+8d) | 2024-04-11 → 2024-04-19 (+8d) |
| 4 | 高风险规则拦截接口 | 2024-04-12 → 2024-04-20 (+8d) | 2024-06-13 → 2024-06-21 (+8d) |
| 5 | 高危规则动态配置 | 2024-06-14 → 2024-06-22 (+8d) | 2024-07-11 → 2024-07-19 (+8d) |
| 6 | 高危命令动态配置 | 2024-04-12 → 2024-04-20 (+8d) | 2024-07-11 → 2024-07-19 (+8d) |
| 7 | 正则表达式自动生成 | 2024-04-12 → 2024-04-20 (+8d) | 2024-05-21 → 2024-05-29 (+8d) |
| 8 | 风险规则库 - 日志模块 | 2024-03-16 → 2024-03-24 (+8d) | 2024-04-20 → 2024-04-28 (+8d) |
| 9 | 风险规则库-数据库生产环境还在申请中 | 2024-09-20 → 2024-09-28 (+8d) | 2024-10-25 → 2024-11-02 (+8d) |
| 10 | **接口服务[三方数据导入]** | 2024-06-30 → 2024-07-08 (+8d) | 2024-10-25 → 2024-11-02 (+8d) |
| 11 | 对接 cmdb 资产数据 | 2024-06-30 → 2024-07-08 (+8d) | 2024-09-10 → 2024-09-18 (+8d) |
| 12 | 对接安全中心[资产账密] | 2024-09-11 → 2024-09-19 (+8d) | 2024-10-25 → 2024-11-02 (+8d) |
| 13 | **接入多平台工作流建设** | 2024-06-19 → 2024-06-27 (+8d) | 2024-10-08 → 2024-10-16 (+8d) |
| 14 | PC端工作流 | 2024-06-19 → 2024-06-27 (+8d) | 2024-08-16 → 2024-08-24 (+8d) |
| 15 | 移动端工作流UI | 2024-08-17 → 2024-08-25 (+8d) | 2024-10-08 → 2024-10-16 (+8d) |
| 16 | **高风险堡垒机建设** | 2024-03-01 → 2024-03-09 (+8d) | 2024-10-21 → 2024-10-29 (+8d) |
| 17 | **堡垒机组件部署** | 2024-03-01 → 2024-03-09 (+8d) | 2024-09-22 → 2024-09-30 (+8d) |
| 18 | Jumpserver Core 组件部署 | 2024-03-01 → 2024-03-09 (+8d) | 2024-07-05 → 2024-07-13 (+8d) |
| 19 | Koko 组件部署 | 2024-03-01 → 2024-03-09 (+8d) | 2024-06-30 → 2024-07-08 (+8d) |
| 20 | 远程应用机[Windows资产] | 2024-07-01 → 2024-07-09 (+8d) | 2024-09-22 → 2024-09-30 (+8d) |
| 21 | SSO单点登录以及添加登录短信认证 | 2024-08-06 → 2024-08-14 (+8d) | 2024-09-25 → 2024-10-03 (+8d) |
| 22 | 登陆日志模块 | 2024-08-06 → 2024-08-14 (+8d) | 2024-09-22 → 2024-09-30 (+8d) |
| 23 | 堡垒机的资产支持批量导入 | 2024-09-23 → 2024-10-01 (+8d) | 2024-10-21 → 2024-10-29 (+8d) |
| 24 | 堡垒机资产、用户等模块 数据量多大而卡顿 | 2024-09-23 → 2024-10-01 (+8d) | 2024-10-21 → 2024-10-29 (+8d) |
| 25 | **堡垒机终端组件** | 2024-05-13 → 2024-05-21 (+8d) | 2024-10-08 → 2024-10-16 (+8d) |
| 26 | **Koko 实现规则拦截** | 2024-05-13 → 2024-05-21 (+8d) | 2024-07-21 → 2024-07-29 (+8d) |
| 27 | 普通高危Linux命令 | 2024-05-13 → 2024-05-21 (+8d) | 2024-06-03 → 2024-06-11 (+8d) |
| 28 | MySQL大部分的高危命令 | 2024-06-04 → 2024-06-12 (+8d) | 2024-07-06 → 2024-07-14 (+8d) |
| 29 | Shell复杂命令 | 2024-07-07 → 2024-07-15 (+8d) | 2024-07-21 → 2024-07-29 (+8d) |
| 30 | 实现接口调用加密 | 2024-05-13 → 2024-05-21 (+8d) | 2024-06-10 → 2024-06-18 (+8d) |
| 31 | 实现事中审批 | 2024-06-04 → 2024-06-12 (+8d) | 2024-07-19 → 2024-07-27 (+8d) |
| 32 | 附件服务器的下载 | 2024-07-22 → 2024-07-30 (+8d) | 2024-10-08 → 2024-10-16 (+8d) |
| 33 | 附件服务器的上传 | 2024-07-22 → 2024-07-30 (+8d) | 2024-10-08 → 2024-10-16 (+8d) |
| 34 | 固定条件+非固定条件优化拦截 | 2024-07-22 → 2024-07-30 (+8d) | 2024-10-08 → 2024-10-16 (+8d) |

## Version 6 (saved 2024-11-04)

Last finish stays 2024-11-02.

Changed:

| ID | Task | Start | Finish |
| --- | --- | --- | --- |
| 9 | 风险规则库-数据库生产环境还在申请中 | 2024-09-28 → 2024-09-26 (-2d) | 2024-11-02 → 2024-10-31 (-2d) |

## Version 7 (saved 2024-11-07)

Last finish 2024-11-02 → 2024-11-07 (+5d). Complete tasks 14 → 16.

Changed:

| ID | Task | Finish | Duration | Complete |
| --- | --- | --- | --- | --- |
| 2 | **高风险规则库建设** | 2024-11-02 → 2024-11-07 (+5d) | 239d → 244d | 68% → 71% |
| 10 | **接口服务[三方数据导入]** | 2024-11-02 → 2024-11-07 (+5d) | 118d → 123d | 92% → 100% |
| 12 | 对接安全中心[资产账密] | 2024-11-02 → 2024-11-07 (+5d) | 45d → 50d | 80% → 100% |
| 16 | **高风险堡垒机建设** | 2024-10-29 → 2024-11-07 (+9d) | 235d → 244d | 84% → 92% |
| 17 | **堡垒机组件部署** |  |  | 100% → 99% |
| 20 | 远程应用机[Windows资产] |  |  | 100% → 95% |
| 23 | 堡垒机的资产支持批量导入 | 2024-10-29 → 2024-11-07 (+9d) | 29d → 38d | 0% → 100% |
| 24 | 堡垒机资产、用户等模块 数据量多大而卡顿 | 2024-10-29 → 2024-11-07 (+9d) | 29d → 38d | 0% → 100% |
| 25 | **堡垒机终端组件** | 2024-10-16 → 2024-11-07 (+22d) | 149d → 171d | 82% → 85% |
| 32 | 附件服务器的下载 | 2024-10-16 → 2024-11-07 (+22d) | 79d → 101d | 90% → 95% |
| 33 | 附件服务器的上传 | 2024-10-16 → 2024-11-07 (+22d) | 79d → 101d | 90% → 95% |
